# Globale planning

How a schedule from MS Project changed from version to version. A marks actual dates.

## Version 1 (saved 2015-09-09, file Globale planning.mpp)

Note of the change: Planning is nog niet klaar

| ID | WBS | Task | Duration | Start | Finish | Predecessors |
| --- | --- | --- | --- | --- | --- | --- |
| 1 | 1 | **Inceprion Phase** | 9.33d | 2015-09-07 | 2015-09-18 |  |
| 2 |  | 1A. Interview voorbereiden | 2h | 2015-09-07 | 2015-09-07 |  |
| 3 |  | 1B. Interview houden en gespreksverslag terugkoppelen | 2h | 2015-09-08 | 2015-09-08 |  |
| 4 |  | 1C. Hernieuwde opdracht | 2d? | 2015-09-07 | 2015-09-07 |  |
| 5 |  | 1D. Prototype van schermen gebaseerd op interview | 2d? | 2015-09-07 | 2015-09-07 |  |
| 6 |  | 1F. Agenda en notulen van elke vergadering | 2d? | 2015-09-07 | 2015-09-07 |  |
| 7 |  | 1G. Plan van aapak, inclusief risicoanalyse(engels) | 2d? | 2015-09-07 | 2015-09-07 |  |
| 8 |  | 1H. Globle planning voor het gehel project in een planningstool | 2d? | 2015-09-07 | 2015-09-07 |  |
| 9 |  | Go/No Go | 1h | 2015-09-15 | 2015-09-15 |  |
| 10 |  | 1J. Gedetailleerde taakverdeling van het functioneel ontwerp in MS-project | 2d? | 2015-09-07 | 2015-09-09 |  |
| 11 |  | 1K. Use-case diagram | 2d? | 2015-09-07 | 2015-09-09 |  |
| 12 |  | 1L. Use-case templates | 2d? | 2015-09-07 | 2015-09-09 |  |
| 13 |  | 1M. Activiteitendiagrammen | 2d? | 2015-09-07 | 2015-09-09 |  |
| 14 |  | Afronden Inception Phase Go/No Go | 1h | 2015-09-18 | 2015-09-18 | 9 |
| 16 | 2 | **Elaboration Phase** | 4.67d | 2015-09-21 | 2015-09-25 |  |
| 17 |  | 2A. Gedatailleerde taakverdeling van het technisch ontwerp in MS-Project | 2d? | 2015-09-21 | 2015-09-22 |  |
| 18 |  | 2B. Modeldictionary (optioneel) | 2d? | 2015-09-21 | 2015-09-22 |  |
| 19 |  | 2C. Klassendiagram (optioneel) | 2d? | 2015-09-21 | 2015-09-22 |  |
| 20 |  | 2D. Ontwerp datadictionary | 2d? | 2015-09-21 | 2015-09-22 |  |
| 21 |  | 2E. Sequentiediagrammen | 2d? | 2015-09-21 | 2015-09-22 |  |
| 22 |  | 2F. Overzicht taakverdeling | 2d? | 2015-09-21 | 2015-09-22 |  |
| 23 |  | G2. Overzicht van de gebruikte hard- en software van de ingerichte ontwikkelomgeving | 1d | 2015-09-21 | 2015-09-21 |  |
| 24 |  | Afronding Elaboration Phase Go/No Go | 0d | 2015-09-21 | 2015-09-21 |  |
| 26 | 3 | **Construction Phase** | 18.67d | 2015-09-28 | 2015-10-23 |  |
| 27 |  | 3A. Genormaliseerd databaseontwerp | 2d? | 2015-09-28 | 2015-09-29 |  |
| 28 |  | 3B. Definitieve datadictionary | 2d? | 2015-09-28 | 2015-09-29 |  |
| 29 |  | 3C. Werkende webapplicatie (v1.0.0) Alles functionaliteit is gerealiseerd | 2d? | 2015-09-28 | 2015-09-29 |  |
| 30 |  | 3D. Dataset (Lijsten van ingevoerde en dus geteste data) | 2d? | 2015-09-28 | 2015-09-29 |  |
| 31 |  | 3E. Technische test is gemaakt | 2d? | 2015-09-28 | 2015-09-29 |  |
| 32 |  | 3F. Technische test is uitgevoerd | 2d | 2015-09-28 | 2015-09-29 |  |
| 33 |  | 3G. Functionele test is gemaakt | 2d | 2015-09-28 | 2015-09-29 |  |
| 34 |  | 3H. Functionele test is uitgevoerd | 2d | 2015-09-28 | 2015-09-29 |  |
| 35 |  | Afronden Construction Phase Go/No Go | 0d | 2015-09-28 | 2015-09-28 |  |
| 37 | 4 | **Transition Phase** | 4.67d | 2015-11-02 | 2015-11-06 |  |
| 38 |  | 4A. Acceptatietest is uitgevoerd bij de opdrachtgever | 2d? | 2015-11-02 | 2015-11-03 |  |
| 39 |  | 4B. Gebruikerhandleiding | 2d? | 2015-11-02 | 2015-11-03 |  |
| 40 |  | 4C. Projectrapport | 2d? | 2015-11-02 | 2015-11-03 |  |
| 41 |  | 4D. Teamrapport | 2d? | 2015-11-02 | 2015-11-03 |  |
| 42 |  | 4E. Presentatie | 2d? | 2015-11-02 | 2015-11-03 |  |
| 43 |  | 4F. Logboek Tijdregistratie | 2d? | 2015-11-02 | 2015-11-03 |  |
| 44 |  | Afronding Transition Phase | 0d | 2015-11-02 | 2015-11-02 |  |

## Version 2 (saved 2015-09-16, file Globale planning week 2.mpp)

Note of the change: Globale planning week 2

Last finish stays 2015-11-06. Complete tasks 0 → 3.

Added:

| ID | Task | Duration | Start | Finish |
| --- | --- | --- | --- | --- |
| 6 | 1E. Offerte uitbrengen | 8h | 2015-09-15 08:40 | 2015-09-16 12:40 |

Changed:

| ID | Task | Start | Finish | Duration | Complete | Predecessors | Other |
| --- | --- | --- | --- | --- | --- | --- | --- |
| 1 | **Inceprion Phase** | 2015-09-07 → 2015-09-07 08:00 | 2015-09-18 → 2015-09-18 12:40 | 9.33d → 9.5d | 0% → 16% |  |  |
| 2 | 1A. Interview voorbereiden | 2015-09-07 → 2015-09-07 08:40 A | 2015-09-07 → 2015-09-07 10:40 A |  | 0% → 100% |  | resources none → Iedereen |
| 3 | 1B. Interview houden en gespreksverslag terugkoppelen | 2015-09-08 → 2015-09-08 08:40 A | 2015-09-08 → 2015-09-08 10:40 A |  | 0% → 100% |  | resources none → Iedereen |
| 4 | 1C. Hernieuwde opdracht | 2015-09-07 → 2015-09-10 08:40 (+3d) | 2015-09-07 → 2015-09-10 11:40 (+3d) | 2d? → 3h |  | none → 2, 3 | resources none → Jorrit |
| 5 | 1D. Prototype van schermen gebaseerd op interview | 2015-09-07 → 2015-09-11 08:40 (+4d) | 2015-09-07 → 2015-09-11 12:40 (+4d) | 2d? → 4h |  | none → 2, 3 | resources none → Jorrit |
| 7 | 1F. Agenda en notulen van elke vergadering | 2015-09-07 → 2015-09-09 08:40 (+2d) | 2015-09-07 → 2015-09-09 09:40 (+2d) | 2d? → 1h |  | none → 2, 3 | resources none → Iedereen |
| 8 | 1G. Plan van aapak, inclusief risicoanalyse(engels) | 2015-09-07 → 2015-09-09 08:40 (+2d) | 2015-09-07 → 2015-09-10 10:40 (+3d) | 2d? → 6h |  | none → 2, 3 | resources none → Evelien |
| 9 | 1H. Globle planning voor het gehel project in een planningstool | 2015-09-07 → 2015-09-10 08:40 A (+3d) | 2015-09-07 → 2015-09-11 09:00 A (+4d) | 2d? → 4h | 0% → 100% | none → 2, 3 | resources none → Teun |
| 10 | Go/No Go | 2015-09-15 → 2015-09-18 08:40 (+3d) | 2015-09-15 → 2015-09-18 08:41 (+3d) | 1h → 1min |  | none → 2, 3, 4, 5, 6, 7, 8 |  |
| 11 | 1J. Gedetailleerde taakverdeling van het functioneel ontwerp in MS-project | 2015-09-07 → 2015-09-14 08:40 (+7d) | 2015-09-09 → 2015-09-15 10:40 (+6d) | 2d? → 5h |  | none → 9 |  |
| 12 | 1K. Use-case diagram | 2015-09-07 → 2015-09-14 08:40 (+7d) | 2015-09-09 → 2015-09-15 10:40 (+6d) | 2d? → 5h |  | none → 9 |  |
| 13 | 1L. Use-case templates | 2015-09-07 → 2015-09-15 08:40 (+8d) | 2015-09-09 → 2015-09-16 09:40 (+7d) | 2d? → 5h |  | none → 9, 11 |  |
| 14 | 1M. Activiteitendiagrammen | 2015-09-07 → 2015-09-17 08:40 (+10d) | 2015-09-09 → 2015-09-18 10:00 (+9d) | 2d? → 5h |  | none → 9 |  |
| 15 | Afronden Inception Phase Go/No Go | 2015-09-18 → 2015-09-18 08:40 | 2015-09-18 → 2015-09-18 08:41 | 1h → 1min |  | 10 → 9 |  |
| 16 | **Elaboration Phase** | 2015-09-21 → 2015-09-21 08:40 | 2015-09-25 → 2015-09-25 12:40 |  |  | none → 14 |  |
| 17 | 2A. Gedatailleerde taakverdeling van het technisch ontwerp in MS-Project | 2015-09-21 → 2015-09-21 08:40 | 2015-09-22 → 2015-09-21 12:40 (-1d) | 2d? → 4h |  | none → 14 |  |
| 18 | 2B. Modeldictionary (optioneel) | 2015-09-21 → 2015-09-22 08:40 (+1d) | 2015-09-22 → 2015-09-22 10:40 | 2d? → 2h |  | none → 14 |  |
| 19 | 2C. Klassendiagram (optioneel) | 2015-09-21 → 2015-09-22 08:40 (+1d) | 2015-09-22 → 2015-09-22 10:40 | 2d? → 2h |  | none → 14 |  |
| 20 | 2D. Ontwerp datadictionary | 2015-09-21 → 2015-09-23 08:40 (+2d) | 2015-09-22 → 2015-09-23 10:40 (+1d) | 2d? → 2h |  | none → 14 |  |
| 21 | 2E. Sequentiediagrammen | 2015-09-21 → 2015-09-23 08:40 (+2d) | 2015-09-22 → 2015-09-23 10:40 (+1d) | 2d? → 2h |  | none → 14 |  |
| 22 | 2F. Overzicht taakverdeling | 2015-09-21 → 2015-09-24 08:40 (+3d) | 2015-09-22 → 2015-09-24 11:40 (+2d) | 2d? → 3h |  | none → 14 |  |
| 23 | G2. Overzicht van de gebruikte hard- en software van de ingerichte ontwikkelomgeving | 2015-09-21 → 2015-09-24 08:40 (+3d) | 2015-09-21 → 2015-09-24 09:40 (+3d) | 1d → 1h |  | none → 14 |  |
| 24 | Afronding Elaboration Phase Go/No Go | 2015-09-21 → 2015-09-25 08:40 (+4d) | 2015-09-21 → 2015-09-25 08:41 (+4d) | 0d → 1min |  | none → 14 |  |
| 26 | **Construction Phase** | 2015-09-28 → 2015-09-28 08:40 | 2015-10-23 → 2015-10-23 12:40 |  |  | none → 24 |  |
| 27 | 3A. Genormaliseerd databaseontwerp | 2015-09-28 → 2015-09-28 08:40 | 2015-09-29 → 2015-09-28 10:40 (-1d) | 2d? → 2h |  | none → 24 |  |
| 28 | 3B. Definitieve datadictionary | 2015-09-28 → 2015-09-28 08:40 | 2015-09-29 → 2015-09-28 10:40 (-1d) | 2d? → 2h |  | none → 24 |  |
| 29 | 3C. Werkende webapplicatie (v1.0.0) Alles functionaliteit is gerealiseerd | 2015-09-28 → 2015-09-25 08:41 (-3d) | 2015-09-29 → 2015-10-20 09:41 (+21d) | 2d? → 16d |  | none → 24 |  |
| 30 | 3D. Dataset (Lijsten van ingevoerde en dus geteste data) | 2015-09-28 → 2015-10-22 08:40 (+24d) | 2015-09-29 → 2015-10-22 10:40 (+23d) | 2d? → 2h |  | none → 24 |  |
| 31 | 3E. Technische test is gemaakt | 2015-09-28 → 2015-10-20 09:41 (+22d) | 2015-09-29 → 2015-10-20 11:41 (+21d) | 2d? → 2h |  | none → 24, 29 |  |
| 32 | 3F. Technische test is uitgevoerd | 2015-09-28 → 2015-10-21 08:40 (+23d) | 2015-09-29 → 2015-10-21 10:40 (+22d) | 2d → 2h |  | none → 24, 29, 31 |  |
| 33 | 3G. Functionele test is gemaakt | 2015-09-28 → 2015-10-22 08:40 (+24d) | 2015-09-29 → 2015-10-22 10:40 (+23d) | 2d → 2h |  | none → 24, 29 |  |
| 34 | 3H. Functionele test is uitgevoerd | 2015-09-28 → 2015-10-23 08:40 (+25d) | 2015-09-29 → 2015-10-23 10:40 (+24d) | 2d → 2h |  | none → 24, 29, 33 |  |
| 35 | Afronden Construction Phase Go/No Go | 2015-09-28 → 2015-10-23 08:40 (+25d) | 2015-09-28 → 2015-10-23 08:41 (+25d) | 0d → 1min |  | none → 24 |  |
| 37 | **Transition Phase** | 2015-11-02 → 2015-11-02 08:40 | 2015-11-06 → 2015-11-06 12:40 |  |  | none → 35 |  |
| 38 | 4A. Acceptatietest is uitgevoerd bij de opdrachtgever | 2015-11-02 → 2015-11-02 08:40 | 2015-11-03 → 2015-11-02 10:40 (-1d) | 2d? → 2h |  | none → 35 |  |
| 39 | 4B. Gebruikerhandleiding | 2015-11-02 → 2015-11-02 08:40 | 2015-11-03 → 2015-11-02 10:40 (-1d) | 2d? → 2h |  | none → 35 |  |
| 40 | 4C. Projectrapport | 2015-11-02 → 2015-11-03 08:40 (+1d) | 2015-11-03 → 2015-11-03 10:40 | 2d? → 2h |  | none → 35 |  |
| 41 | 4D. Teamrapport | 2015-11-02 → 2015-11-04 08:40 (+2d) | 2015-11-03 → 2015-11-04 10:40 (+1d) | 2d? → 2h |  | none → 35 |  |
| 42 | 4E. Presentatie | 2015-11-02 → 2015-11-05 08:40 (+3d) | 2015-11-03 → 2015-11-05 09:40 (+2d) | 2d? → 1h |  | none → 35 |  |
| 43 | 4F. Logboek Tijdregistratie | 2015-11-02 → 2015-11-04 08:40 (+2d) | 2015-11-03 → 2015-11-04 11:40 (+1d) | 2d? → 3h |  | none → 35 |  |
| 44 | Afronding Transition Phase | 2015-11-02 → 2015-11-06 08:40 (+4d) | 2015-11-02 → 2015-11-06 08:41 (+4d) | 0d → 1min |  | none → 35 |  |

## Version 3 (saved 2015-09-18, file Globale planning week 2.mpp)

Note of the change: Betere planning week2

Last finish stays 2015-11-06. Complete tasks 3 → 7.

Changed:

| ID | Task | Start | Finish | Duration | Complete | Total float | Predecessors | Other |
| --- | --- | --- | --- | --- | --- | --- | --- | --- |
| 1 | **Inceprion Phase** | 2015-09-07 08:00 → 2015-09-07 08:40 A | 2015-09-18 12:40 → 2015-09-22 12:40 (+4d) | 9.5d → 11.08d | 16% → 71% | none → 29.92d |  |  |
| 4 | 1C. Hernieuwde opdracht | 2015-09-10 08:40 → 2015-09-15 08:40 A (+5d) | 2015-09-10 11:40 → 2015-09-15 12:40 A (+5d) |  | 0% → 100% |  |  |  |
| 5 | 1D. Prototype van schermen gebaseerd op interview | 2015-09-11 08:40 → 2015-09-16 08:40 A (+5d) | 2015-09-11 12:40 → 2015-09-17 10:40 A (+6d) | 4h → 6h | 0% → 100% |  |  | resources Jorrit → Teun |
| 6 | 1E. Offerte uitbrengen | 2015-09-15 08:40 → 2015-09-17 08:40 A (+2d) | 2015-09-16 12:40 → 2015-09-18 11:00 (+2d) | 8h → 6h | 0% → 75% | none → 0d |  | constraint none → start no earlier than 2015-09-17 08:40; resources none → Jorrit; Teun |
| 7 | 1F. Agenda en notulen van elke vergadering | 2015-09-09 08:40 A | 2015-09-09 09:40 A |  | 0% → 100% |  |  |  |
| 8 | 1G. Plan van aapak, inclusief risicoanalyse(engels) | 2015-09-09 08:40 → 2015-09-14 08:40 A (+5d) | 2015-09-10 10:40 → 2015-09-15 11:40 A (+5d) |  | 0% → 100% |  |  |  |
| 10 | Go/No Go | 2015-09-18 08:40 → 2015-09-18 11:00 A | 2015-09-18 08:41 → 2015-09-18 11:01 |  | 0% → 90% | none → -0.34d | 2, 3, 4, 5, 6, 7, 8 → 2, 3, 4, 5, 6, 7, 8, 9 |  |
| 11 | 1J. Gedetailleerde taakverdeling van het functioneel ontwerp in MS-project | 2015-09-14 08:40 → 2015-09-18 11:01 (+4d) | 2015-09-15 10:40 → 2015-09-18 12:01 (+3d) | 5h → 1h |  | none → 1.91d | 9 → 10 | resources none → Teun |
| 12 | 1K. Use-case diagram | 2015-09-14 08:40 → 2015-09-18 11:01 (+4d) | 2015-09-15 10:40 → 2015-09-21 09:01 (+6d) | 5h → 2h |  | none → 30.58d | 9 → 10 | constraint none → start no earlier than 2015-09-17 08:40; resources none → Evelien |
| 13 | 1L. Use-case templates | 2015-09-15 08:40 → 2015-09-21 09:01 (+6d) | 2015-09-16 09:40 → 2015-09-22 10:01 (+6d) | 5h → 4h |  | none → 30.58d | 9, 11 → 10, 12 | resources none → Evelien; Jorrit |
| 14 | 1M. Activiteitendiagrammen | 2015-09-17 08:40 → 2015-09-22 09:40 (+5d) | 2015-09-18 10:00 → 2015-09-22 12:40 (+4d) | 5h → 3h |  | none → -1.75d | 9 → 10 | constraint none → start no earlier than 2015-09-22 08:40; resources none → Teun |
| 15 | Afronden Inception Phase Go/No Go | 2015-09-18 08:40 → 2015-09-22 09:40 (+4d) | 2015-09-18 08:41 → 2015-09-22 09:41 (+4d) |  |  | none → 13.66d | 9 → 10 | constraint none → start no earlier than 2015-09-22 08:40 |
| 16 | **Elaboration Phase** | 2015-09-21 08:40 → 2015-09-22 09:41 (+1d) | 2015-09-25 12:40 → 2015-09-25 08:41 | 4.67d → 2.67d |  | none → 13.66d | 14 → 15 |  |
| 17 | 2A. Gedatailleerde taakverdeling van het technisch ontwerp in MS-Project | 2015-09-21 08:40 → 2015-09-22 09:41 (+1d) | 2015-09-21 12:40 → 2015-09-23 09:41 (+2d) |  |  | none → 30.66d | 14 → 15 |  |
| 18 | 2B. Modeldictionary (optioneel) | 2015-09-22 08:40 → 2015-09-22 09:41 | 2015-09-22 10:40 → 2015-09-22 11:41 |  |  | none → 31.16d | 14 → 15 |  |
| 19 | 2C. Klassendiagram (optioneel) | 2015-09-22 08:40 → 2015-09-22 09:41 | 2015-09-22 10:40 → 2015-09-22 11:41 |  |  | none → 31.16d | 14 → 15 |  |
| 20 | 2D. Ontwerp datadictionary |  |  |  |  | none → 29.42d | 14 → 15 | constraint none → start no earlier than 2015-09-23 08:40 |
| 21 | 2E. Sequentiediagrammen |  |  |  |  | none → 29.42d | 14 → 15 | constraint none → start no earlier than 2015-09-23 08:40 |
| 22 | 2F. Overzicht taakverdeling | 2015-09-24 08:40 → 2015-09-23 08:40 (-1d) | 2015-09-24 11:40 → 2015-09-23 11:40 (-1d) |  |  | none → 29.17d | 14 → 15 | constraint none → start no earlier than 2015-09-23 08:40 |
| 23 | G2. Overzicht van de gebruikte hard- en software van de ingerichte ontwikkelomgeving |  |  |  |  | none → 28.67d | 14 → 15 | constraint none → start no earlier than 2015-09-24 08:40 |
| 24 | Afronding Elaboration Phase Go/No Go |  |  |  |  | none → 11d | 14 → 15 | constraint none → start no earlier than 2015-09-25 08:40 |
| 26 | **Construction Phase** | 2015-09-28 08:40 → 2015-09-25 08:41 (-3d) | 2015-10-23 12:40 → 2015-10-23 09:00 | 18.67d → 18.75d |  | none → 9.25d |  |  |
| 27 | 3A. Genormaliseerd databaseontwerp | 2015-09-28 08:40 → 2015-09-25 08:41 (-3d) | 2015-09-28 10:40 → 2015-09-25 10:41 (-3d) |  |  | none → 27.5d |  |  |
| 28 | 3B. Definitieve datadictionary |  |  |  |  | none → 26.5d |  | constraint none → start no earlier than 2015-09-28 08:40 |
| 29 | 3C. Werkende webapplicatie (v1.0.0) Alles functionaliteit is gerealiseerd | 2015-09-25 08:41 → 2015-09-28 11:40 (+3d) | 2015-10-20 09:41 → 2015-10-21 12:40 (+1d) |  |  | none → 9.25d |  | constraint none → finish no earlier than 2015-10-21 12:40 |
| 30 | 3D. Dataset (Lijsten van ingevoerde en dus geteste data) | 2015-10-22 08:40 → 2015-09-29 09:40 (-23d) | 2015-10-22 10:40 → 2015-09-29 11:40 (-23d) |  |  | none → 25.5d |  | constraint none → start no earlier than 2015-09-29 08:40 |
| 31 | 3E. Technische test is gemaakt | 2015-10-20 09:41 → 2015-10-22 08:40 (+2d) | 2015-10-20 11:41 → 2015-10-22 10:40 (+2d) |  |  | none → 9.25d |  | constraint none → start no earlier than 2015-10-22 08:40 |
| 32 | 3F. Technische test is uitgevoerd | 2015-10-21 08:40 → 2015-10-22 10:40 (+1d) | 2015-10-21 10:40 → 2015-10-23 09:00 (+2d) |  |  | none → 9.25d |  |  |
| 34 | 3H. Functionele test is uitgevoerd | 2015-10-23 08:40 → 2015-10-22 10:40 (-1d) | 2015-10-23 10:40 → 2015-10-23 09:00 |  |  | none → 9.25d |  |  |
| 35 | Afronden Construction Phase Go/No Go |  |  |  |  | none → 8.58d |  | constraint none → start no earlier than 2015-10-23 08:40 |
| 37 | **Transition Phase** |  | 2015-11-06 12:40 → 2015-11-06 08:41 | 4.67d → 3.67d |  | none → 0d |  |  |
| 38 | 4A. Acceptatietest is uitgevoerd bij de opdrachtgever |  |  |  |  | none → 3.17d |  | constraint none → start no earlier than 2015-11-02 08:40 |
| 39 | 4B. Gebruikerhandleiding |  |  |  |  | none → 3.17d |  | constraint none → start no earlier than 2015-11-02 08:40 |
| 40 | 4C. Projectrapport | 2015-11-03 08:40 → 2015-11-03 09:40 | 2015-11-03 10:40 → 2015-11-03 11:40 |  |  | none → 2.17d |  | constraint none → start no earlier than 2015-11-03 08:40 |
| 41 | 4D. Teamrapport | 2015-11-04 08:40 → 2015-11-03 09:40 (-1d) | 2015-11-04 10:40 → 2015-11-03 11:40 (-1d) |  |  | none → 2.17d |  | constraint none → start no earlier than 2015-11-03 08:40 |
| 42 | 4E. Presentatie | 2015-11-05 08:40 → 2015-11-04 08:40 (-1d) | 2015-11-05 09:40 → 2015-11-04 09:40 (-1d) |  |  | none → 1.67d |  | constraint none → start no earlier than 2015-11-04 08:40 |
| 43 | 4F. Logboek Tijdregistratie |  |  |  |  | none → 1.17d |  | constraint none → start no earlier than 2015-11-04 08:40 |
| 44 | Afronding Transition Phase |  |  |  |  | none → 0d |  | constraint none → start no earlier than 2015-11-06 08:40 |

## Version 4 (saved 2015-09-22, file Globale planning week 3.mpp)

Note of the change: Globale plenning week 3

Last finish stays 2015-11-06. Complete tasks 7 → 11.

Changed:

| ID | Task | Start | Finish | Duration | Complete | Total float | Other |
| --- | --- | --- | --- | --- | --- | --- | --- |
| 1 | **Inceprion Phase** |  |  |  | 71% → 82% |  |  |
| 6 | 1E. Offerte uitbrengen |  | 2015-09-18 11:00 A |  | 75% → 100% | 0d → none |  |
| 10 | Go/No Go |  | 2015-09-18 11:01 A |  | 90% → 100% | -0.34d → none |  |
| 11 | 1J. Gedetailleerde taakverdeling van het functioneel ontwerp in MS-project | 2015-09-18 11:01 A | 2015-09-18 12:01 A |  | 0% → 100% | 1.91d → none |  |
| 12 | 1K. Use-case diagram | 2015-09-18 11:01 A | 2015-09-21 09:01 A |  | 0% → 100% | 30.58d → none |  |
| 17 | 2A. Gedatailleerde taakverdeling van het technisch ontwerp in MS-Project |  | 2015-09-23 09:41 → 2015-09-22 11:41 (-1d) | 4h → 2h |  | 30.66d → 30.17d | resources none → Teun |
| 20 | 2D. Ontwerp datadictionary |  |  |  |  |  | resources none → Jorrit |
| 21 | 2E. Sequentiediagrammen |  |  |  |  |  | resources none → Evelien; Jorrit |
| 22 | 2F. Overzicht taakverdeling |  |  |  |  |  | resources none → Evelien |
| 23 | G2. Overzicht van de gebruikte hard- en software van de ingerichte ontwikkelomgeving |  |  |  |  |  | resources none → Teun |

## Version 5 (saved 2015-11-06, file Globale planning week 4.mpp)

Note of the change: global planningen

Last finish stays 2015-11-06. Complete tasks 11 → 14.

Changed:

| ID | Task | Start | Finish | Complete | Total float |
| --- | --- | --- | --- | --- | --- |
| 1 | **Inceprion Phase** |  | 2015-09-22 12:40 A | 82% → 100% | 29.92d → none |
| 13 | 1L. Use-case templates | 2015-09-21 09:01 A | 2015-09-22 10:01 A | 0% → 100% | 30.58d → none |
| 14 | 1M. Activiteitendiagrammen | 2015-09-22 09:40 A | 2015-09-22 12:40 A | 0% → 100% | -1.75d → none |
| 15 | Afronden Inception Phase Go/No Go | 2015-09-22 09:40 A | 2015-09-22 09:41 A | 0% → 100% | 13.66d → none |

## Version 6 (saved 2015-11-06, file Globale planning week 5.mpp)

Note of the change: global planningen

Last finish stays 2015-11-06. Complete tasks 14 → 22.

Changed:

| ID | Task | Start | Finish | Complete | Total float |
| --- | --- | --- | --- | --- | --- |
| 16 | **Elaboration Phase** | 2015-09-22 09:41 A |  | 0% → 71% | 13.66d → 28d |
| 17 | 2A. Gedatailleerde taakverdeling van het technisch ontwerp in MS-Project | 2015-09-22 09:41 A | 2015-09-22 11:41 A | 0% → 100% | 30.17d → none |
| 20 | 2D. Ontwerp datadictionary | 2015-09-23 08:40 A | 2015-09-23 10:40 A | 0% → 100% | 29.42d → none |
| 21 | 2E. Sequentiediagrammen | 2015-09-23 08:40 A | 2015-09-23 10:40 A | 0% → 100% | 29.42d → none |
| 22 | 2F. Overzicht taakverdeling | 2015-09-23 08:40 A | 2015-09-23 11:40 A | 0% → 100% | 29.17d → none |
| 23 | G2. Overzicht van de gebruikte hard- en software van de ingerichte ontwikkelomgeving | 2015-09-24 08:40 A | 2015-09-24 09:40 A | 0% → 100% | 28.67d → none |
| 24 | Afronding Elaboration Phase Go/No Go | 2015-09-25 08:40 A | 2015-09-25 08:41 A | 0% → 100% | 11d → none |
| 26 | **Construction Phase** | 2015-09-25 08:41 A |  | 0% → 5% |  |
| 27 | 3A. Genormaliseerd databaseontwerp | 2015-09-25 08:41 A | 2015-09-25 10:41 A | 0% → 100% | 27.5d → none |
| 28 | 3B. Definitieve datadictionary | 2015-09-28 08:40 A | 2015-09-28 10:40 A | 0% → 100% | 26.5d → none |

## Version 7 (saved 2015-11-06, file Globale planning week 7.mpp)

Note of the change: global planningen

Last finish 2015-11-06 → 2015-11-11 (+5d).

Changed:

| ID | Task | Start | Finish | Duration | Total float | Predecessors | Other |
| --- | --- | --- | --- | --- | --- | --- | --- |
| 26 | **Construction Phase** |  | 2015-10-23 09:00 → 2015-11-09 12:40 (+17d) | 18.75d → 30d | 9.25d → 0.75d |  |  |
| 29 | 3C. Werkende webapplicatie (v1.0.0) Alles functionaliteit is gerealiseerd | 2015-09-28 11:40 → 2015-10-14 12:20 (+16d) | 2015-10-21 12:40 → 2015-11-06 12:40 (+16d) |  | 9.25d → 0.75d |  | constraint finish no earlier than 2015-10-21 12:40 → finish no earlier than 2015-11-06 12:40 |
| 31 | 3E. Technische test is gemaakt | 2015-10-22 08:40 → 2015-11-09 08:40 (+18d) | 2015-10-22 10:40 → 2015-11-09 10:40 (+18d) |  | 9.25d → 0.75d |  |  |
| 32 | 3F. Technische test is uitgevoerd | 2015-10-22 10:40 → 2015-11-09 10:40 (+18d) | 2015-10-23 09:00 → 2015-11-09 12:40 (+17d) |  | 9.25d → 0.75d |  |  |
| 33 | 3G. Functionele test is gemaakt | 2015-10-22 08:40 → 2015-11-09 08:40 (+18d) | 2015-10-22 10:40 → 2015-11-09 10:40 (+18d) |  | 9.25d → 0.75d |  |  |
| 34 | 3H. Functionele test is uitgevoerd | 2015-10-22 10:40 → 2015-11-09 10:40 (+18d) | 2015-10-23 09:00 → 2015-11-09 12:40 (+17d) |  | 9.25d → 0.75d |  |  |
| 37 | **Transition Phase** | 2015-11-02 08:40 → 2015-11-05 08:40 (+3d) | 2015-11-06 08:41 → 2015-11-11 08:41 (+5d) |  | 0d → none | 35 → none |  |
| 38 | 4A. Acceptatietest is uitgevoerd bij de opdrachtgever | 2015-11-02 08:40 → 2015-11-05 08:40 (+3d) | 2015-11-02 10:40 → 2015-11-05 10:40 (+3d) |  |  |  | constraint start no earlier than 2015-11-02 08:40 → start no earlier than 2015-11-05 08:40 |
| 39 | 4B. Gebruikerhandleiding | 2015-11-02 08:40 → 2015-11-05 08:40 (+3d) | 2015-11-02 10:40 → 2015-11-05 10:40 (+3d) |  |  |  | constraint start no earlier than 2015-11-02 08:40 → start no earlier than 2015-11-05 08:40 |
| 40 | 4C. Projectrapport | 2015-11-03 09:40 → 2015-11-05 08:40 (+2d) | 2015-11-03 11:40 → 2015-11-05 10:40 (+2d) |  | 2.17d → 3.17d |  | constraint start no earlier than 2015-11-03 08:40 → start no earlier than 2015-11-05 08:40 |
| 41 | 4D. Teamrapport | 2015-11-03 09:40 → 2015-11-05 08:40 (+2d) | 2015-11-03 11:40 → 2015-11-05 10:40 (+2d) |  | 2.17d → 3.17d |  | constraint start no earlier than 2015-11-03 08:40 → start no earlier than 2015-11-05 08:40 |
| 42 | 4E. Presentatie | 2015-11-04 08:40 → 2015-11-05 08:40 (+1d) | 2015-11-04 09:40 → 2015-11-05 09:40 (+1d) |  | 1.67d → 3.42d |  | constraint start no earlier than 2015-11-04 08:40 → start no earlier than 2015-11-05 08:40 |
| 43 | 4F. Logboek Tijdregistratie | 2015-11-04 08:40 → 2015-11-05 08:40 (+1d) | 2015-11-04 11:40 → 2015-11-05 11:40 (+1d) |  | 1.17d → 2.92d |  | constraint start no earlier than 2015-11-04 08:40 → start no earlier than 2015-11-05 08:40 |
| 44 | Afronding Transition Phase | 2015-11-06 08:40 → 2015-11-05 08:40 (-1d) | 2015-11-06 08:41 → 2015-11-05 08:41 (-1d) |  | 0d → 1.91d |  | constraint start no earlier than 2015-11-06 08:40 → start no earlier than 2015-11-05 08:40 |

## Version 8 (saved 2015-11-06, file Globale planning week 8.mpp)

Note of the change: global planningen

Last finish stays 2015-11-11. Complete tasks 22 → 23.

Changed:

| ID | Task | Start | Finish | Complete | Total float |
| --- | --- | --- | --- | --- | --- |
| 26 | **Construction Phase** |  |  | 5% → 8% |  |
| 33 | 3G. Functionele test is gemaakt | 2015-11-09 08:40 A | 2015-11-09 10:40 A | 0% → 100% | 0.75d → none |
